# SDK 4.0

Schedule from MS Project, 2007-01-19 to 2007-07-27, A marks actual dates.
NCI

## Calendars

- Standard: Mon-Fri 08:00-12:00, 13:00-17:00; Sat-Sun off. Exceptions (off unless hours are given): 2007-02-05 to 2007-02-07, 2007-07-04.

## Resources

| Resource |
| --- |
| Satish |
| Dan |
| Charles |
| Avinash |
| Steve |
| Kunal |
| Doug |
| Satish/Kunal |
| Dan/Kunal |
| Ye |
| C |
| caGrid |
| Kunal/Satish |
| Satish/Dan |
| Christophe |
| Steve A. |
| Ye Wu |

## Schedule

| ID | WBS | Task | Type | Duration | Start | Finish | Predecessors | Complete | Remaining | Total slack | Free slack | Constraint | Resources | Work | Actual work |
| --- | --- | --- | --- | --- | --- | --- | --- | --- | --- | --- | --- | --- | --- | --- | --- |
| 1 | 1 | **caCORE SDK v4.0** |  | 132d? | 2007-01-19 A | 2007-07-27 |  | 23% | 101.62d? | 0d |  |  |  | 1924h | 630.8h |
| 2 | 1.1 | **Inception** |  | 3d | 2007-01-19 A | 2007-01-23 A |  | 100% |  |  |  |  |  | 8h | 8h |
| 3 | 1.1.1 | 4.0 Kickoff meeting | milestone | 0d | 2007-01-19 A | 2007-01-19 A |  | 100% |  |  |  | start no earlier than 2007-01-19 | Satish; Charles; Dan; Steve |  |  |
| 4 | 1.1.2 | Create initial task plan |  | 1d | 2007-01-23 A | 2007-01-23 A |  | 100% |  |  |  |  | Satish | 8h | 8h |
| 5 | 1.2 | **Eloboration** |  | 13d | 2007-01-23 A | 2007-02-13 |  | 98% | 0.31d | 117d |  |  |  | 246h | 240.4h |
| 6 | 1.2.1 | **Requiements meetings** |  | 6.25d | 2007-01-23 A | 2007-01-31 A |  | 100% |  |  |  |  |  | 78h | 78h |
| 7 | 1.2.1.1 | Requirements meeting (CGEMS, Rambrandt) |  | 0.25d | 2007-01-29 A | 2007-01-29 A |  | 100% |  |  |  | start no earlier than 2007-01-29 | Satish; Dan; Steve | 6h | 6h |
| 8 | 1.2.1.2 | Requirements Meeting (caCORE API) |  | 0.25d | 2007-01-23 A | 2007-01-23 A |  | 100% |  |  |  |  | Satish; Dan; Steve | 6h | 6h |
| 9 | 1.2.1.3 | Requirements meeting (caAdapter) |  | 0.25d | 2007-01-30 A | 2007-01-30 A |  | 100% |  |  |  | start no earlier than 2007-01-30 | Satish; Dan; Steve | 6h | 6h |
| 10 | 1.2.1.4 | Requirements meeting (caDSR) |  | 0.25d | 2007-01-30 A | 2007-01-30 A |  | 100% |  |  |  | start no earlier than 2007-01-30 | Satish; Dan; Steve | 6h | 6h |
| 11 | 1.2.1.5 | Requirements meeting (caGRID) |  | 0.25d | 2007-01-31 A | 2007-01-31 A |  | 100% |  |  |  | start no earlier than 2007-01-31 | Satish; Dan; Steve | 6h | 6h |
| 12 | 1.2.1.6 | Requirements meeting (other teams) |  | 2d | 2007-01-29 A | 2007-01-30 A |  | 100% |  |  |  | start no earlier than 2007-01-29 | Satish; Dan; Steve | 48h | 48h |
| 13 | 1.2.2 | **Scope Document** |  | 10d | 2007-01-26 A | 2007-02-13 |  | 96% | 0.4d | 117d |  |  |  | 88h | 84h |
| 14 | 1.2.2.1 | Prepare list of scope items on gforge |  | 1d | 2007-01-26 A | 2007-01-26 |  | 80% | 0.2d | 44.35d | 0d | start no earlier than 2007-01-26 | Satish | 8h | 6.4h |
| 15 | 1.2.2.2 | Draft scope document |  | 3d | 2007-01-29 A | 2007-01-31 A | 14 | 100% |  |  |  |  | Charles | 24h | 24h |
| 16 | 1.2.2.3 | Estimate LOE for Iteration 1 - 3 scope items |  | 1d | 2007-02-01 A | 2007-02-01 A | 15 | 100% |  |  |  |  | Satish | 8h | 8h |
| 17 | 1.2.2.4 | Prepare risk list |  | 1d | 2007-02-02 A | 2007-02-02 | 16 | 90% | 0.1d | 118d |  |  | Charles; Satish | 16h | 14.4h |
| 18 | 1.2.2.5 | NCICB Review of scope document |  | 3d | 2007-02-08 A | 2007-02-12 A | 17 | 100% |  |  |  |  | Avinash | 24h | 24h |
| 19 | 1.2.2.6 | Revise scope document |  | 1d | 2007-02-13 A | 2007-02-13 | 18 | 90% | 0.1d | 114d |  |  | Charles | 8h | 7.2h |
| 20 | 1.2.3 | **QA Actvities** |  | 7d | 2007-01-23 A | 2007-01-31 |  | 99% | 0.1d | 123d |  |  |  | 72h | 70.4h |
| 21 | 1.2.3.1 | Setup QA repository | milestone | 0d | 2007-01-23 A | 2007-01-23 A |  | 100% |  |  |  |  | Steve |  |  |
| 22 | 1.2.3.2 | Modify Unit test cases and data |  | 5d | 2007-01-23 A | 2007-01-29 A | 21 | 100% |  |  |  |  | Steve | 40h | 40h |
| 23 | 1.2.3.3 | Validate test case |  | 2d | 2007-01-30 A | 2007-01-31 | 22 | 95% | 0.1d | 120d |  |  | Steve; Satish | 32h | 30.4h |
| 24 | 1.2.4 | Revise task plan |  | 0.5d | 2007-01-23 A | 2007-01-23 A |  | 100% |  |  |  |  | Charles; Satish | 8h | 8h |

| ID | WBS | Task | Duration | Start | Finish | Predecessors | Complete | Remaining | Total slack | Free slack | Constraint | Resources | Work | Actual work |
| --- | --- | --- | --- | --- | --- | --- | --- | --- | --- | --- | --- | --- | --- | --- |
| 25 | 1.3 | **Construction** | 125d? | 2007-01-23 A | 2007-07-20 |  | 19% | 101.55d? | 5d |  |  |  | 1670h | 382.4h |
| 26 | 1.3.1 | **Iteration 1** | 44d | 2007-01-23 A | 2007-03-28 |  | 56% | 19.38d | 86d |  |  |  | 706h | 382.4h |
| 27 | 1.3.1.1 | **SDK 3.2.1 Release** | 14d | 2007-01-23 A | 2007-02-14 A |  | 100% |  |  |  |  |  | 112h | 112h |
| 28 | 1.3.1.1.1 | Integrate new UI | 14d | 2007-01-23 A | 2007-02-14 A |  | 100% |  |  |  |  | Dan | 112h | 112h |
| 29 | 1.3.1.2 | **QA** | 3d | 2007-02-15 A | 2007-02-19 |  | 95% | 0.15d | 94d |  |  |  | 24h | 22.8h |
| 30 | 1.3.1.2.1 | Test new UI | 3d | 2007-02-15 A | 2007-02-19 | 28 | 95% | 0.15d | 98d | 0d |  | Steve | 24h | 22.8h |
| 31 | 1.3.1.3 | **caGrid Integration** | 33d | 2007-02-12 A | 2007-03-28 |  | 45% | 18.22d | 86d |  |  |  | 570h | 247.6h |
| 32 | 1.3.1.3.1 | **Support multiple concurrent users on the same ApplicationService** | 13.5d | 2007-02-12 A | 2007-03-01 A |  | 100% |  |  |  |  |  | 112h | 112h |
| 33 | 1.3.1.3.1.1 | Design | 3d | 2007-02-12 A | 2007-02-14 A | 101 | 100% |  |  |  |  | Satish/Kunal | 24h | 24h |
| 34 | 1.3.1.3.1.2 | Prototype | 3d | 2007-02-15 A | 2007-02-19 A | 33 | 100% |  |  |  |  | Satish | 24h | 24h |
| 35 | 1.3.1.3.1.3 | Design Review | 0.5d | 2007-02-20 A | 2007-02-20 A | 34 | 100% |  |  |  |  | Satish; Kunal; Doug; Avinash | 16h | 16h |
| 36 | 1.3.1.3.1.4 | Design Update/Prototype | 3d | 2007-02-20 A | 2007-02-23 A | 35 | 100% |  |  |  |  | Satish | 24h | 24h |
| 37 | 1.3.1.3.1.5 | Development | 3d | 2007-02-26 A | 2007-03-01 A | 38 | 100% |  |  |  |  | Satish | 24h | 24h |
| 38 | 1.3.1.3.2 | Use documentation in the Java docs (GF#1243) & Integrate JavaDocs in the web system | 2d | 2007-02-23 A | 2007-02-27 A | 36 | 100% |  |  |  |  | Satish | 16h | 16h |
| 39 | 1.3.1.3.3 | **Security** | 10.5d | 2007-02-27 A | 2007-03-13 |  | 26% | 7.81d | 0d |  |  |  | 128h | 32.8h |
| 40 | 1.3.1.3.3.1 | Implement Security in Thick Client | 4d | 2007-02-27 A | 2007-03-05 | 38 | 95% | 0.2d | 2.5d | 0d |  | Satish | 32h | 30.4h |
| 41 | 1.3.1.3.3.2 | **Integration of new Installation Process into SDK** | 3d | 2007-03-02 A | 2007-03-06 |  | 10% | 2.7d | 0d |  |  |  | 24h | 2.4h |
| 42 | 1.3.1.3.3.2.1 | Code | 3d | 2007-03-02 A | 2007-03-06 |  | 10% | 2.7d | 0d |  | start no earlier than 2007-03-02 | Kunal | 24h | 2.4h |
| 43 | 1.3.1.3.3.3 | **Upgrade to CSM to Support Grid ability to leverage new CSM installation steps** | 3d | 2007-03-07 | 2007-03-09 |  |  |  | 0d |  |  |  | 24h |  |
| 44 | 1.3.1.3.3.3.1 | Code | 3d | 2007-03-07 | 2007-03-09 | 41 |  |  | 0d |  |  | Kunal | 24h |  |
| 45 | 1.3.1.3.3.4 | **Configurable Authentication and Authorization for SDK Generated System** | 4d | 2007-03-05 | 2007-03-09 |  |  |  | 2.5d |  |  |  | 32h |  |
| 46 | 1.3.1.3.3.4.1 | Code | 4d | 2007-03-05 | 2007-03-09 | 40 |  |  | 2.5d |  |  | Satish | 32h |  |
| 47 | 1.3.1.3.3.5 | **Documentation** | 2d | 2007-03-12 | 2007-03-13 |  |  |  | 0d |  |  |  | 16h |  |
| 48 | 1.3.1.3.3.5.1 | SDK Programmer's/Technical Guide | 2d | 2007-03-12 | 2007-03-13 | 43 |  |  | 0d |  |  | Kunal/Satish | 16h |  |
| 49 | 1.3.1.3.4 | Castor related work was performed on SDK 3.1 branch move to SDK 3.2 | 3d | 2007-02-15 A | 2007-02-19 A | 28 | 100% |  |  |  |  | Dan | 24h | 24h |
| 50 | 1.3.1.3.5 | Castor mapping for inheritance defect (GF#4031) | 0.25d | 2007-02-20 A | 2007-02-20 A | 49 | 100% |  |  |  |  | Dan | 2h | 2h |

| ID | WBS | Task | Type | Duration | Start | Finish | Predecessors | Complete | Remaining | Total slack | Free slack | Constraint | Resources | Work | Actual work |
| --- | --- | --- | --- | --- | --- | --- | --- | --- | --- | --- | --- | --- | --- | --- | --- |
| 51 | 1.3.1.3.6 | **Performance due to unnecessary nested sub-selects** |  | 6d | 2007-02-20 A | 2007-02-28 A | 50 | 100% |  |  |  |  |  | 48h | 48h |
| 52 | 1.3.1.3.6.1 | Analysis/Development |  | 6d | 2007-02-20 A | 2007-02-28 A |  | 100% |  |  |  |  | Dan | 48h | 48h |
| 53 | 1.3.1.3.7 | Provide the ability to only generate an XSD and castor mapping based on xmi input |  | 2d | 2007-02-28 A | 2007-03-02 | 51 | 80% | 0.4d | 5.25d | 0d |  | Dan | 16h | 12.8h |
| 54 | 1.3.1.3.8 | CQL Semantic Integration |  | 3d | 2007-03-02 | 2007-03-07 | 53 |  |  | 5.25d | 0d |  | Dan | 24h |  |
| 55 | 1.3.1.3.9 | **QA** |  | 21d | 2007-02-20 | 2007-03-20 |  |  |  | 16d |  |  |  | 120h |  |
| 56 | 1.3.1.3.9.1 | Test Development |  | 7d | 2007-02-20 | 2007-02-28 | 30 |  |  | 94d | 9d | start no earlier than 2007-02-14 | Steve | 56h |  |
| 57 | 1.3.1.3.9.2 | Test Execution |  | 5d | 2007-03-14 | 2007-03-20 | 39, 56 |  |  | 85d | 0d |  | Steve | 40h |  |
| 58 | 1.3.1.3.9.3 | Test Support |  | 3d | 2007-03-14 | 2007-03-16 | 39 |  |  | 0d |  |  | Satish/Dan | 24h |  |
| 59 | 1.3.1.3.10 | **Documentation** |  | 2d | 2007-03-07 | 2007-03-09 |  |  |  | 5.25d |  |  |  | 16h |  |
| 60 | 1.3.1.3.10.1 | Update Programmers Guide, Release Notes |  | 1d | 2007-03-07 | 2007-03-08 | 54 |  |  | 5.25d | 0d |  | Dan | 8h |  |
| 61 | 1.3.1.3.10.2 | Review |  | 0.5d | 2007-03-08 | 2007-03-08 | 60 |  |  | 5.25d | 0d |  | Dan | 4h |  |
| 62 | 1.3.1.3.10.3 | Final |  | 0.5d | 2007-03-08 | 2007-03-09 | 61 |  |  | 5.25d | 0d |  | Dan | 4h |  |
| 63 | 1.3.1.3.11 | Release Packaging |  | 2d | 2007-03-21 | 2007-03-28 | 57 |  |  | 86d |  |  | Satish | 16h |  |
| 64 | 1.3.1.3.12 | **Iteration Plan** |  | 2d | 2007-03-21 | 2007-03-22 | 57 |  |  | 85d |  |  |  | 48h |  |
| 65 | 1.3.1.3.12.1 | Review Client Feature Request/Revise Task Plan |  | 2d | 2007-03-21 | 2007-03-22 |  |  |  | 85d | 0d |  | Charles; Avinash; Satish | 48h |  |
| 66 | 1.3.1.4 | 3.2.1 Release Complete | milestone | 0d | 2007-03-22 | 2007-03-22 | 65 |  |  | 90d |  |  |  |  |  |
| 67 | 1.3.2 | **Iteration 2** |  | 41.75d | 2007-03-09 | 2007-05-07 |  |  |  | 5.25d |  |  |  | 690h |  |
| 68 | 1.3.2.1 | **SDK 4.0 Release** |  | 41.75d | 2007-03-09 | 2007-05-07 |  |  |  | 5.25d |  |  |  | 690h |  |
| 69 | 1.3.2.1.1 | Update Requirements Document |  | 5d | 2007-03-23 | 2007-03-29 | 65 |  |  | 85d |  |  | Charles [15%] | 6h |  |
| 70 | 1.3.2.1.2 | **Open Source Modeling Tool XMI Processor** |  | 18d | 2007-03-09 | 2007-04-04 |  |  |  | 5.25d |  |  |  | 220h |  |
| 71 | 1.3.2.1.2.1 | Evaluation |  | 4d | 2007-03-09 | 2007-03-15 | 62 |  |  | 5.25d | 0d |  | Dan | 32h |  |
| 72 | 1.3.2.1.2.2 | Present Evaluation for review |  | 0.5d | 2007-03-15 | 2007-03-15 | 71 |  |  | 5.25d | 0d |  | Dan | 4h |  |
| 73 | 1.3.2.1.2.3 | Revise Evaluation/Finalize On Tool |  | 1d | 2007-03-15 | 2007-03-16 | 72 |  |  | 5.25d | 0d |  | Dan | 8h |  |
| 74 | 1.3.2.1.2.4 | Build caCORE Test Model |  | 2d | 2007-03-16 | 2007-03-20 | 73 |  |  | 5.25d | 0d |  | Dan | 16h |  |
| 75 | 1.3.2.1.2.5 | Design |  | 5d | 2007-03-20 | 2007-03-27 | 74 |  |  | 5.25d | 0d |  | Dan | 40h |  |
| 76 | 1.3.2.1.2.6 | Design Review |  | 0.5d | 2007-03-27 | 2007-03-28 | 75 |  |  | 5.25d | 0d |  | Dan; Satish; Christophe; Ye | 16h |  |
| 77 | 1.3.2.1.2.7 | Finalize Design |  | 1d | 2007-03-28 | 2007-03-29 | 76 |  |  | 5.25d | 0d |  | Dan | 8h |  |
| 78 | 1.3.2.1.2.8 | Evaluate LOE/Revise Task Plan for Development |  | 4d | 2007-03-29 | 2007-04-04 | 77 |  |  | 81.75d |  |  | Charles; Steve A.; Ye Wu | 96h |  |

| ID | WBS | Task | Duration | Start | Finish | Predecessors | Total slack | Free slack | Constraint | Resources | Work |
| --- | --- | --- | --- | --- | --- | --- | --- | --- | --- | --- | --- |
| 79 | 1.3.2.1.3 | **NCICB XMI Processor changes** | 31d | 2007-03-19 | 2007-04-30 |  | 0d |  |  |  | 336h |
| 80 | 1.3.2.1.3.1 | Detailed design of new code generation framework | 6d | 2007-03-19 | 2007-03-26 | 58 | 0d |  |  | Satish | 48h |
| 81 | 1.3.2.1.3.2 | Design Review/Update | 1d | 2007-03-27 | 2007-03-27 | 80 | 0d |  |  | Satish; Doug; Ye; Avinash | 32h |
| 82 | 1.3.2.1.3.3 | Implement new code generation framework | 3d | 2007-03-28 | 2007-03-30 | 81 | 0d |  |  | Satish | 24h |
| 83 | 1.3.2.1.3.4 | Rewrite bean generation for JDK 1.5 | 2d | 2007-04-02 | 2007-04-03 | 82 | 0d |  |  | Satish | 16h |
| 84 | 1.3.2.1.3.5 | Rewrite O/R mapping generation (.hbm.xml, .cfg.xml, ehcache.xml) | 10d | 2007-04-04 | 2007-04-17 | 83 | 0d |  |  | Satish | 80h |
| 85 | 1.3.2.1.3.6 | Implement class cache for JDK 1.5 | 4d | 2007-03-29 | 2007-04-04 | 77 | 5.25d | 0d |  | Dan | 32h |
| 86 | 1.3.2.1.3.7 | Rewrite XML schema generaotor | 2d | 2007-04-04 | 2007-04-06 | 85 | 5.25d | 0d |  | Dan | 16h |
| 87 | 1.3.2.1.3.8 | Rewrite XML mapping file generator | 2d | 2007-04-06 | 2007-04-10 | 86 | 5.25d | 0d |  | Dan | 16h |
| 88 | 1.3.2.1.3.9 | Supporting files generation (coreBeans.properties, DAOConfig.xml) | 5d | 2007-04-18 | 2007-04-24 | 84 | 0d |  |  | Satish | 40h |
| 89 | 1.3.2.1.3.10 | Change nestedCriteria to use JDK 1.5 beans | 2d | 2007-04-25 | 2007-04-26 | 85, 88 | 0d |  |  | Satish | 16h |
| 90 | 1.3.2.1.3.11 | Change CQL translator to use JDK 1.5 beans | 2d | 2007-04-27 | 2007-04-30 | 85, 89 | 0d |  |  | Satish | 16h |
| 91 | 1.3.2.1.4 | **QA** | 30d | 2007-03-27 | 2007-05-07 |  | 25d |  |  |  | 104h |
| 92 | 1.3.2.1.4.1 | Test Development | 5d | 2007-03-27 | 2007-04-02 | 80 | 78d | 10.25d | start no earlier than 2007-03-05 | Steve | 40h |
| 93 | 1.3.2.1.4.2 | Test Execution | 5d | 2007-05-01 | 2007-05-07 | 90 | 53d | 0d |  | Steve | 40h |
| 94 | 1.3.2.1.4.3 | Test Support | 3d | 2007-05-01 | 2007-05-03 | 90 | 0d |  |  | Satish | 24h |
| 95 | 1.3.2.1.5 | **Iteration Plan** | 1d | 2007-04-10 | 2007-04-11 |  | 76.75d |  |  |  | 24h |
| 96 | 1.3.2.1.5.1 | Review Client Feature Request/Revise Task Plan | 1d | 2007-04-10 | 2007-04-11 | 87 | 76.75d |  |  | Charles; Avinash; Satish | 24h |
| 97 | 1.3.3 | **Iteration 3** | 24.75d | 2007-04-10 | 2007-05-14 | 87 | 5.25d |  |  |  | 250h |
| 98 | 1.3.3.1 | **Release 4.0 Beta 1** | 24.75d | 2007-04-10 | 2007-05-14 |  | 5.25d |  |  |  | 226h |
| 99 | 1.3.3.1.1 | Update Requirements Document | 5d | 2007-04-10 | 2007-04-17 | 87 | 67.75d | 0d |  | Charles [15%] | 6h |
| 100 | 1.3.3.1.2 | **Support multiple ApplicationService in same JVM** | 10d | 2007-04-10 | 2007-04-24 |  | 5.25d | 0d |  |  | 92h |
| 101 | 1.3.3.1.2.1 | Design | 3d | 2007-04-10 | 2007-04-13 | 87 | 5.25d | 0d | start no earlier than 2007-02-12 | Dan | 24h |
| 102 | 1.3.3.1.2.2 | Design Review | 0.5d | 2007-04-13 | 2007-04-13 | 101 | 5.25d | 0d |  | Satish; Kunal; Doug; Avinash | 16h |
| 103 | 1.3.3.1.2.3 | Design Update | 0.5d | 2007-04-13 | 2007-04-16 | 102 | 5.25d | 0d |  | Dan | 4h |
| 104 | 1.3.3.1.2.4 | Development/Unit Test | 6d | 2007-04-16 | 2007-04-24 | 103 | 5.25d |  |  | Dan | 48h |

| ID | WBS | Task | Type | Duration | Start | Finish | Predecessors | Total slack | Free slack | Constraint | Resources | Work |
| --- | --- | --- | --- | --- | --- | --- | --- | --- | --- | --- | --- | --- |
| 105 | 1.3.3.1.3 | **Improved logging/trace messages** |  | 2.5d | 2007-04-24 | 2007-04-26 | 100 | 5.25d | 0d |  |  | 20h |
| 106 | 1.3.3.1.3.1 | Development |  | 2.5d | 2007-04-24 | 2007-04-26 |  | 5.25d |  |  | Dan | 20h |
| 107 | 1.3.3.1.4 | Unrecognized database format for EA (GF#3955) |  | 0.5d | 2007-04-26 | 2007-04-27 | 105 | 64.25d | 0d |  | Dan | 4h |
| 108 | 1.3.3.1.5 | Build script change for downloading MySQL (GF#2933) |  | 0.5d | 2007-04-27 | 2007-04-27 | 107 | 64.25d |  |  | Dan | 4h |
| 109 | 1.3.3.1.6 | **QA** |  | 19.75d | 2007-04-17 | 2007-05-14 |  | 53d |  |  |  | 100h |
| 110 | 1.3.3.1.6.1 | Test Development |  | 5d | 2007-04-17 | 2007-04-24 | 99, 92 | 67.75d |  |  | Steve | 40h |
| 111 | 1.3.3.1.6.2 | Test Execution |  | 5d | 2007-05-08 | 2007-05-14 | 93 | 53d |  |  | Steve | 40h |
| 112 | 1.3.3.1.6.3 | Test Support |  | 2.5d | 2007-05-08 | 2007-05-10 | 93 | 55.5d |  |  | Dan | 20h |
| 113 | 1.3.3.2 | Release 4.0 Beta 1 Complete | milestone | 0d | 2007-05-03 | 2007-05-03 | 94, 105 | 0d |  | start no earlier than 2007-05-01 |  |  |
| 114 | 1.3.3.3 | Review Client Feature Request/Revise Task Plan |  | 1d | 2007-05-04 | 2007-05-04 | 113 | 59d |  |  | Charles; Avinash; Satish | 24h |
| 115 | 1.3.4 | **Iteration 5** |  | 21d? | 2007-05-04 | 2007-06-01 | 113 | 0d |  |  |  | 24h |
| 116 | 1.3.4.1 | Release 4.0 Beta 2 |  | 20d | 2007-05-04 | 2007-05-31 |  | 0d |  |  |  |  |
| 117 | 1.3.4.2 | Review Client Feature Request/Revise Task Plan |  | 1d? | 2007-06-01 | 2007-06-01 | 116 | 39d |  |  | Charles; Avinash; Satish | 24h |
| 118 | 1.3.5 | **Iteration 6** |  | 15d | 2007-06-01 | 2007-06-21 | 116 | 0d |  |  |  |  |
| 119 | 1.3.5.1 | Release 4.0 Final |  | 15d | 2007-06-01 | 2007-06-21 |  | 0d |  |  |  |  |
| 120 | 1.3.6 | Integration Test |  | 10d | 2007-06-22 | 2007-07-06 | 118 | 5d | 0d |  |  |  |
| 121 | 1.3.7 | UAT Test |  | 10d | 2007-07-09 | 2007-07-20 | 120 | 5d |  |  |  |  |
| 122 | 1.4 | **Transition** |  | 25d | 2007-06-22 | 2007-07-27 |  | 0d |  |  |  |  |
| 123 | 1.4.1 | **Documentation** |  | 25d | 2007-06-22 | 2007-07-27 | 118 | 0d |  |  |  |  |
| 124 | 1.4.1.1 | New users guide |  | 10d | 2007-06-22 | 2007-07-06 |  | 0d |  | start no earlier than 2007-06-15 |  |  |
| 125 | 1.4.1.2 | New technical guide |  | 10d | 2007-07-09 | 2007-07-20 | 124 | 0d |  | start no earlier than 2007-06-15 |  |  |
| 126 | 1.4.1.3 | How to example |  | 5d | 2007-07-23 | 2007-07-27 | 125 | 0d |  | start no earlier than 2007-06-15 |  |  |
| 127 | 1.4.2 | 4.0 Release Complete | milestone | 0d | 2007-07-27 | 2007-07-27 | 123 | 0d |  |  |  |  |
